How a schedule from MS Project changed from version to version. A marks actual dates.

## Version 1 (saved 2024-02-25, file Автомат.mpp)

Note of the change: vse

| ID | WBS | Task | Duration | Start | Finish | Predecessors | Total float |
| --- | --- | --- | --- | --- | --- | --- | --- |
| 1 |  | Начало проекта | 0d | 2024-02-09 | 2024-02-09 |  | 0d |
| 2 | 2 | **Анализ требований** | 24d | 2024-02-09 | 2024-03-18 |  | 0d |
| 3 |  | Встреча с заказчиком | 1d | 2024-02-09 | 2024-02-09 | 1 | 0d |
| 4 |  | Сбор информации | 9d | 2024-02-12 | 2024-02-22 | 3 | 102d |
| 5 |  | Написание документа требований | 2d | 2024-02-12 | 2024-02-13 | 3 | 0d |
| 6 |  | Обсуждение требований с заказчиком | 2d | 2024-02-14 | 2024-02-22 | 5 | 0d |
| 7 |  | Корректировка требований | 2d | 2024-02-23 | 2024-02-27 | 6 | 0d |
| 8 |  | Подготовка договора и устава | 2d | 2024-02-23 | 2024-02-26 | 6 | 1d |
| 9 |  | Согласование документов с заказчиком | 2d | 2024-02-28 | 2024-02-29 | 7, 8 | 0d |
| 10 |  | Анализ требований завершен | 9d | 2024-03-01 | 2024-03-18 | 9 | 0d |
| 11 | 3 | **Разработка ТЗ** | 20d | 2024-03-18 | 2024-04-15 |  | 0d |
| 12 |  | Определение структуры WEB-приложения | 7d | 2024-03-19 | 2024-03-28 | 10 | 0d |
| 13 |  | Выбор технологий | 1d | 2024-03-18 | 2024-03-19 | 10 | 7d |
| 14 |  | Разработка ТЗ | 4d | 2024-03-28 | 2024-04-03 | 12, 13 | 0d |
| 15 |  | Согласование ТЗ с заказчиком | 2d | 2024-04-03 | 2024-04-05 | 14 | 0d |
| 16 |  | Разработка ТЗ завершена | 0d | 2024-04-05 | 2024-04-05 | 15 | 0d |
| 17 | 3.6 | **Создание прототипа** | 6d | 2024-04-05 | 2024-04-15 |  | 0d |
| 18 |  | Создание прототипа | 4d | 2024-04-05 | 2024-04-11 | 16 | 0d |
| 19 |  | Согласование с заказчиком | 2d | 2024-04-11 | 2024-04-15 | 18 | 0d |
| 20 |  | Создание прототипа завершено | 0d | 2024-04-15 | 2024-04-15 | 19 | 0d |
| 21 | 4 | **Разработка дизайна WEB-приложения** | 21d | 2024-04-15 | 2024-05-16 |  | 0d |
| 22 |  | Разработка макетов страниц | 12d | 2024-04-15 | 2024-05-02 | 20 | 0d |
| 23 |  | Согласование макетов с заказчиком | 4d | 2024-05-02 | 2024-05-08 | 22 | 0d |
| 24 |  | Доработка макетов | 1d | 2024-05-08 | 2024-05-10 | 23 | 0d |
| 25 |  | Утверждение окончательного варианта | 1d | 2024-05-15 | 2024-05-16 | 24FS+3d | 0d |
| 26 |  | Разработка дизайна завершена | 0d | 2024-05-16 | 2024-05-16 | 25 | 0d |
| 27 | 5 | **Верстка и программирование** | 29d | 2024-05-16 | 2024-06-26 |  | 0d |
| 28 |  | Разработка клиентской части | 16d | 2024-05-16 | 2024-06-07 | 26 | 0d |
| 29 |  | Разработка серверной части | 15d | 2024-05-16 | 2024-06-06 | 26 | 5d |
| 30 |  | Подготовка контента и заполнение | 4d | 2024-06-07 | 2024-06-13 | 28 | 0d |
| 31 |  | Тестирование | 2d | 2024-06-13 | 2024-06-17 | 29, 30 | 0d |
| 32 |  | Правка кода, устранение сбоев в работе | 4d | 2024-06-17 | 2024-06-21 | 31 | 0d |
| 33 |  | Интеграция с внешними системами и | 3d | 2024-06-21 | 2024-06-26 | 32 | 0d |
| 34 |  | Верстка и программирование завершены | 0d | 2024-06-26 | 2024-06-26 | 33 | 0d |
| 35 | 6 | **Тестирование и отладка WEB-приложения** | 13d | 2024-06-26 | 2024-07-15 |  | 0d |
| 36 |  | Техническое тестирование | 2d | 2024-06-26 | 2024-06-28 | 34 | 0d |
| 37 |  | Тестирование на стороне заказчика | 4d | 2024-06-28 | 2024-07-04 | 36 | 0d |
| 38 |  | Отладка | 7d | 2024-07-04 | 2024-07-15 | 37 | 0d |
| 39 |  | Тестирование и отладка завершены | 0d | 2024-07-15 | 2024-07-15 | 38 | 0d |
| 40 | 7 | **Внедрение** | 5d | 2024-07-15 | 2024-07-22 |  | 0d |
| 41 |  | Перенос на рабочий сервер | 2d | 2024-07-15 | 2024-07-17 | 39 | 1d |
| 42 |  | Формирование отчетности | 3d | 2024-07-15 | 2024-07-18 | 39 | 0d |
| 43 |  | Передача WEB-приложения заказчику | 2d | 2024-07-18 | 2024-07-22 | 41, 42 | 0d |
| 44 |  | Внедрение завершено | 0d | 2024-07-22 | 2024-07-22 | 43 | 0d |
| 45 |  | Проект завершен | 0d | 2024-07-22 | 2024-07-22 | 44 | 0d |

## Version 2 (saved 2024-03-01, file Комби.mpp)

Note of the change: vse

Last finish 2024-07-22 → 2024-07-31 (+9d). Complete tasks 0 → 24.

Changed:

| ID | Task | Start | Finish | Duration | Complete | Total float | Other |
| --- | --- | --- | --- | --- | --- | --- | --- |
| 1 | Начало проекта |  |  |  |  | 0d → 118.88d | baseline start none → 2024-02-09; baseline finish none → 2024-02-09 |
| 2 | **Анализ требований** | 2024-02-09 A | 2024-03-18 → 2024-03-27 (+9d) | 24d → 31d | 0% → 63% | 0d → 87.88d | baseline start none → 2024-02-09; baseline finish none → 2024-03-27 |
| 3 | Встреча с заказчиком | 2024-02-09 A | 2024-02-09 A |  | 0% → 100% | 0d → none | baseline start none → 2024-02-09; baseline finish none → 2024-02-09 |
| 4 | Сбор информации | 2024-02-12 A | 2024-02-22 → 2024-03-01 (+8d) | 9d → 14.58d | 0% → 86% | 102d → 102.88d | baseline start none → 2024-02-12; baseline finish none → 2024-02-19 |
| 5 | Написание документа требований | 2024-02-12 A | 2024-02-13 → 2024-02-23 (+10d) | 2d → 5.75d | 0% → 39% | 0d → 4.62d | constraint none → start no earlier than 2024-02-12; resources Руководитель проекта; Бизнес-аналитик → Руководитель проекта; Бизнес-аналитик [50%]; baseline start none → 2024-02-12; baseline finish none → 2024-02-23 |
| 6 | Обсуждение требований с заказчиком | 2024-02-14 → 2024-02-26 A (+12d) | 2024-02-22 → 2024-03-01 (+8d) | 2d → 3d | 0% → 96% | 0d → 102.88d | constraint none → start no earlier than 2024-02-14; resources Бизнес-аналитик; Руководитель проекта; Веб-архитектор; Дизайнер; Услуги связи [0.1%] → Бизнес-аналитик [20%]; Руководитель проекта [50%]; Веб-архитектор; Дизайнер; Услуги связи [0.1%]; baseline start none → 2024-02-23; baseline finish none → 2024-03-01 |
| 7 | Корректировка требований | 2024-02-23 → 2024-03-04 A (+10d) | 2024-02-27 → 2024-03-04 A (+6d) | 2d → 1d | 0% → 100% | 0d → none | baseline start none → 2024-03-04; baseline finish none → 2024-03-04 |
| 8 | Подготовка договора и устава | 2024-02-23 → 2024-03-04 A (+10d) | 2024-02-26 → 2024-03-07 A (+10d) | 2d → 2.5d | 0% → 100% | 1d → none | constraint none → start no earlier than 2024-02-21; resources Руководитель проекта; Картридж для принтера [1 шт]; Бумага [1 шт] → Руководитель проекта; Картридж для принтера [1.25 шт]; Бумага [1.25 шт]; baseline start none → 2024-03-04; baseline finish none → 2024-03-06 |
| 9 | Согласование документов с заказчиком | 2024-02-28 → 2024-03-07 A (+8d) | 2024-02-29 → 2024-03-13 A (+13d) | 2d → 3d | 0% → 100% | 0d → none | constraint none → start no earlier than 2024-02-27; baseline start none → 2024-03-07; baseline finish none → 2024-03-13 |
| 10 | Анализ требований завершен | 2024-03-01 → 2024-03-13 (+12d) | 2024-03-18 → 2024-03-27 (+9d) |  |  | 0d → 87.88d | baseline start none → 2024-03-13; baseline finish none → 2024-03-27 |
| 11 | **Разработка ТЗ** | 2024-03-18 → 2024-03-27 A (+9d) | 2024-04-15 → 2024-04-23 (+8d) | 20d → 19.88d | 0% → 98% | 0d → 68d | baseline start none → 2024-03-27; baseline finish none → 2024-04-23 |
| 12 | Определение структуры WEB-приложения | 2024-03-19 → 2024-03-27 A (+8d) | 2024-03-28 → 2024-04-10 A (+13d) | 7d → 10d | 0% → 100% | 0d → none | baseline start none → 2024-03-27; baseline finish none → 2024-04-05 |
| 13 | Выбор технологий | 2024-03-18 → 2024-04-05 A (+18d) | 2024-03-19 → 2024-04-05 A (+17d) |  | 0% → 100% | 7d → none | constraint none → start no earlier than 2024-04-05; baseline start none → 2024-04-05; baseline finish none → 2024-04-05 |
| 14 | Разработка ТЗ | 2024-03-28 → 2024-04-08 A (+11d) | 2024-04-03 → 2024-04-11 A (+8d) |  | 0% → 100% | 0d → none | baseline start none → 2024-04-08; baseline finish none → 2024-04-11 |
| 15 | Согласование ТЗ с заказчиком | 2024-04-03 → 2024-04-12 A (+9d) | 2024-04-05 → 2024-04-15 (+10d) |  | 0% → 81% | 0d → 74d | baseline start none → 2024-04-12; baseline finish none → 2024-04-15 |
| 16 | Разработка ТЗ завершена | 2024-04-05 → 2024-04-15 (+10d) | 2024-04-05 → 2024-04-15 (+10d) |  |  | 0d → 74d | baseline start none → 2024-04-15; baseline finish none → 2024-04-15 |
| 17 | **Создание прототипа** | 2024-04-05 → 2024-04-16 A (+11d) | 2024-04-15 → 2024-04-23 (+8d) |  | 0% → 99% | 0d → 68d | baseline start none → 2024-04-16; baseline finish none → 2024-04-23 |
| 18 | Создание прототипа | 2024-04-05 → 2024-04-16 A (+11d) | 2024-04-11 → 2024-04-19 A (+8d) |  | 0% → 100% | 0d → none | baseline start none → 2024-04-16; baseline finish none → 2024-04-19 |
| 19 | Согласование с заказчиком | 2024-04-11 → 2024-04-22 A (+11d) | 2024-04-15 → 2024-04-23 A (+8d) |  | 0% → 100% | 0d → none | baseline start none → 2024-04-22; baseline finish none → 2024-04-23 |
| 20 | Создание прототипа завершено | 2024-04-15 → 2024-04-23 (+8d) | 2024-04-15 → 2024-04-23 (+8d) |  |  | 0d → 68d | baseline start none → 2024-04-23; baseline finish none → 2024-04-23 |
| 21 | **Разработка дизайна WEB-приложения** | 2024-04-15 → 2024-04-24 A (+9d) | 2024-05-16 → 2024-05-28 (+12d) | 21d → 22.08d | 0% → 99% | 0d → 6.42d | baseline start none → 2024-04-24; baseline finish none → 2024-05-27 |
| 22 | Разработка макетов страниц | 2024-04-15 → 2024-04-24 A (+9d) | 2024-05-02 → 2024-05-14 A (+12d) |  | 0% → 100% | 0d → none | baseline start none → 2024-04-24; baseline finish none → 2024-05-14 |
| 23 | Согласование макетов с заказчиком | 2024-05-02 → 2024-05-14 A (+12d) | 2024-05-08 → 2024-05-20 A (+12d) |  | 0% → 100% | 0d → none | baseline start none → 2024-05-14; baseline finish none → 2024-05-20 |
| 24 | Доработка макетов | 2024-05-08 → 2024-05-20 A (+12d) | 2024-05-10 → 2024-05-21 A (+11d) |  | 0% → 100% | 0d → none | baseline start none → 2024-05-20; baseline finish none → 2024-05-21 |
| 25 | Утверждение окончательного варианта | 2024-05-15 → 2024-05-24 A (+9d) | 2024-05-16 → 2024-05-28 A (+12d) | 1d → 2.08d | 0% → 100% | 0d → none | baseline start none → 2024-05-24; baseline finish none → 2024-05-27 |
| 26 | Разработка дизайна завершена | 2024-05-16 → 2024-05-28 (+12d) | 2024-05-16 → 2024-05-28 (+12d) |  |  | 0d → 13.92d | baseline start none → 2024-05-27; baseline finish none → 2024-05-27 |
| 27 | **Верстка и программирование** | 2024-05-16 → 2024-05-27 A (+11d) | 2024-06-26 → 2024-07-05 (+9d) |  | 0% → 84% | 0d → 18d | baseline start none → 2024-05-27; baseline finish none → 2024-07-05 |
| 28 | Разработка клиентской части | 2024-05-16 → 2024-05-27 A (+11d) | 2024-06-07 → 2024-06-18 A (+11d) |  | 0% → 100% | 0d → none | baseline start none → 2024-05-27; baseline finish none → 2024-06-18 |
| 29 | Разработка серверной части | 2024-05-16 → 2024-05-27 A (+11d) | 2024-06-06 → 2024-06-17 (+11d) |  | 0% → 50% | 5d → 32d | baseline start none → 2024-05-27; baseline finish none → 2024-06-17 |
| 30 | Подготовка контента и заполнение | 2024-06-07 → 2024-06-18 A (+11d) | 2024-06-13 → 2024-06-24 A (+11d) |  | 0% → 100% | 0d → none | baseline start none → 2024-06-18; baseline finish none → 2024-06-24 |
| 31 | Тестирование | 2024-06-13 → 2024-06-24 A (+11d) | 2024-06-17 → 2024-06-26 A (+9d) |  | 0% → 100% | 0d → none | baseline start none → 2024-06-24; baseline finish none → 2024-06-26 |
| 32 | Правка кода, устранение сбоев в работе | 2024-06-17 → 2024-06-26 A (+9d) | 2024-06-21 → 2024-07-04 A (+13d) | 4d → 6.25d | 0% → 100% | 0d → none | baseline start none → 2024-06-26; baseline finish none → 2024-07-02 |
| 33 | Интеграция с внешними системами и | 2024-06-21 → 2024-07-02 A (+11d) | 2024-06-26 → 2024-07-05 A (+9d) |  | 0% → 100% | 0d → none | baseline start none → 2024-07-02; baseline finish none → 2024-07-05 |
| 34 | Верстка и программирование завершены | 2024-06-26 → 2024-07-05 (+9d) | 2024-06-26 → 2024-07-05 (+9d) |  |  | 0d → 18d | baseline start none → 2024-07-05; baseline finish none → 2024-07-05 |
| 35 | **Тестирование и отладка WEB-приложения** | 2024-06-26 → 2024-07-05 A (+9d) | 2024-07-15 → 2024-07-24 (+9d) |  | 0% → 99% | 0d → 5d | baseline start none → 2024-07-05; baseline finish none → 2024-07-24 |
| 36 | Техническое тестирование | 2024-06-26 → 2024-07-05 A (+9d) | 2024-06-28 → 2024-07-09 A (+11d) |  | 0% → 100% | 0d → none | baseline start none → 2024-07-05; baseline finish none → 2024-07-09 |
| 37 | Тестирование на стороне заказчика | 2024-06-28 → 2024-07-09 A (+11d) | 2024-07-04 → 2024-07-15 A (+11d) |  | 0% → 100% | 0d → none | baseline start none → 2024-07-09; baseline finish none → 2024-07-15 |
| 38 | Отладка | 2024-07-04 → 2024-07-15 A (+11d) | 2024-07-15 → 2024-07-24 A (+9d) |  | 0% → 100% | 0d → none | baseline start none → 2024-07-15; baseline finish none → 2024-07-24 |
| 39 | Тестирование и отладка завершены | 2024-07-15 → 2024-07-24 (+9d) | 2024-07-15 → 2024-07-24 (+9d) |  |  | 0d → 5d | baseline start none → 2024-07-24; baseline finish none → 2024-07-24 |
| 40 | **Внедрение** | 2024-07-15 → 2024-07-24 A (+9d) | 2024-07-22 → 2024-07-31 (+9d) |  | 0% → 99% |  | baseline start none → 2024-07-24; baseline finish none → 2024-07-31 |
| 41 | Перенос на рабочий сервер | 2024-07-15 → 2024-07-24 A (+9d) | 2024-07-17 → 2024-07-26 A (+9d) |  | 0% → 100% | 1d → none | baseline start none → 2024-07-24; baseline finish none → 2024-07-26 |
| 42 | Формирование отчетности | 2024-07-15 → 2024-07-24 A (+9d) | 2024-07-18 → 2024-07-29 A (+11d) |  | 0% → 100% | 0d → none | baseline start none → 2024-07-24; baseline finish none → 2024-07-29 |
| 43 | Передача WEB-приложения заказчику | 2024-07-18 → 2024-07-29 A (+11d) | 2024-07-22 → 2024-07-31 A (+9d) |  | 0% → 100% | 0d → none | baseline start none → 2024-07-29; baseline finish none → 2024-07-31 |
| 44 | Внедрение завершено | 2024-07-22 → 2024-07-31 (+9d) | 2024-07-22 → 2024-07-31 (+9d) |  |  |  | baseline start none → 2024-07-31; baseline finish none → 2024-07-31 |
| 45 | Проект завершен | 2024-07-22 → 2024-07-31 (+9d) | 2024-07-22 → 2024-07-31 (+9d) |  |  |  | baseline start none → 2024-07-31; baseline finish none → 2024-07-31 |
